How a schedule from OmniPlan changed from version to version. A marks actual dates.

## Version 1 (saved 2015-12-10)

Note of the change: （+）【开发计划】上传2.0.0版本开发计划

| ID | WBS | Task | Constraint |
| --- | --- | --- | --- |
| 1 | 1 | **并读新闻 iOS 2.0.0 开发计划** |  |
| 2 | 1.1 | **UI框架搭建** | start no earlier than 2015-12-10 |
| 3 |  | 生活方式 | start no earlier than 2015-12-10 |
| 4 |  | 个人中心 | start no earlier than 2015-12-10 |
| 5 |  | 系统设置（UIUX） |  |
| 6 |  | 新闻收藏（UIUX） |  |
| 7 | 1.4 | **并友** |  |
| 8 |  | 并友（UIUX） | start no earlier than 2015-12-10 |
| 9 |  | 通讯录（UIUX） | start no earlier than 2015-12-10 |
| 10 |  | 集市（UIUX） |  |
| 11 | 1.6 | **任务** |  |
| 12 |  | UIUX | start no earlier than 2015-12-10 |
| 13 |  | 业务逻辑 | start no earlier than 2015-12-10 |
| 14 | 1.7 | **文章详情** |  |
| 15 |  | 生活方式（UIUX） | start no earlier than 2015-12-10 |
| 16 |  | 即时新闻（UIUX） | start no earlier than 2015-12-10 |
| 17 |  | 视频播放 |  |
| 18 |  | 百科词条 | start no earlier than 2015-12-10 |
| 19 | 1.10 | **生活方式** | start no earlier than 2015-12-10 |
| 20 | 1.10.1 | **精选文章列表** | start no earlier than 2015-12-10 |
| 21 |  | UIUX | start no earlier than 2015-12-10 |
| 22 |  | 业务逻辑 | start no earlier than 2015-12-10 |
| 23 |  | 接口调试 | start no earlier than 2015-12-10 |
| 24 | 1.10.2 | **分类标签列表** | start no earlier than 2015-12-10 |
| 25 |  | UIUX | start no earlier than 2015-12-10 |
| 26 |  | 业务逻辑 | start no earlier than 2015-12-10 |
| 27 |  | 接口调试 | start no earlier than 2015-12-10 |
| 28 | 1.10.3 | **标签文章列表** | start no earlier than 2015-12-10 |
| 29 |  | UIUX | start no earlier than 2015-12-10 |
| 30 |  | 业务逻辑 | start no earlier than 2015-12-10 |
| 31 |  | 接口调试 | start no earlier than 2015-12-10 |
| 32 |  | 新启动引导页 | start no earlier than 2015-12-10 |
| 33 |  | 新闻直播推送 | start no earlier than 2015-12-10 |

## Version 2 (saved 2015-12-10)

Note of the change: （*）【开发计划】更新开发计划

Added:

| ID | Task | Predecessors | Constraint | Resources |
| --- | --- | --- | --- | --- |
| 4 | UIUX |  | start no earlier than 2015-12-10 | 黄玉辉 |
| 5 | 业务逻辑 | 4 | start no earlier than 2015-12-10 | 黄玉辉 |
| 6 | 测试周期 | 5 | start no earlier than 2015-12-10 | 黄玉辉 |
| 8 | UIUX |  | start no earlier than 2015-12-10 | 黄玉辉 |
| 9 | 业务逻辑 | 8 | start no earlier than 2015-12-10 | 黄玉辉 |
| 10 | 测试周期 | 9 | start no earlier than 2015-12-10 | 黄玉辉 |
| 12 | UIUX |  | start no earlier than 2015-12-10 | 林思敏 |
| 13 | 测试周期 | 12 | start no earlier than 2015-12-10 | 林思敏 |
| 15 | UIUX |  | start no earlier than 2015-12-10 | 林思敏 |
| 16 | 测试周期 | 15 | start no earlier than 2015-12-10 | 林思敏 |
| 18 | UIUX |  | start no earlier than 2015-12-14 | 陈新存 |
| 19 | 测试周期 | 18 | start no earlier than 2015-12-10 | 陈新存 |
| 21 | UIUX |  | start no earlier than 2015-12-10 | 陈新存 |
| 22 | 测试周期 | 21 | start no earlier than 2015-12-10 | 陈新存 |
| 25 | UIUX |  | start no earlier than 2015-12-14 | 刘云鹏 |
| 26 | 测试周期 | 25 | start no earlier than 2015-12-10 | 刘云鹏 |
| 28 | UIUX |  | start no earlier than 2015-12-10 | 林思敏 |
| 29 | 测试周期 | 28 | start no earlier than 2015-12-10 | 林思敏 |
| 32 | UIUX |  | start no earlier than 2015-12-10 | 刘云鹏 |
| 33 | 业务逻辑 | 32 | start no earlier than 2015-12-10 | 刘云鹏 |
| 34 | 测试周期 | 33 | start no earlier than 2015-12-10 | 刘云鹏 |
| 36 | UIUX |  | start no earlier than 2015-12-10 | 刘云鹏 |
| 37 | 业务逻辑 | 36 | start no earlier than 2015-12-10 | 刘云鹏 |
| 38 | 测试周期 | 37 | start no earlier than 2015-12-10 | 刘云鹏 |
| 40 | UIUX |  | start no earlier than 2015-12-10 | 刘云鹏 |
| 41 | 接口调试 | 40 | start no earlier than 2015-12-10 | 刘云鹏 |
| 42 | 业务逻辑 | 41 | start no earlier than 2015-12-10 | 刘云鹏 |
| 43 | 测试周期 | 42 | start no earlier than 2015-12-10 | 刘云鹏 |
| 45 | UIUX |  | start no earlier than 2015-12-10 | 刘云鹏 |
| 46 | 接口调试 | 45 | start no earlier than 2015-12-10 | 刘云鹏 |
| 47 | 业务逻辑 | 46 | start no earlier than 2015-12-10 | 刘云鹏 |
| 48 | 测试周期 | 47 | start no earlier than 2015-12-10 | 刘云鹏 |
| 54 | 测试周期 | 53 | start no earlier than 2015-12-10 | 黄玉辉 |
| 59 | 测试周期 | 58 | start no earlier than 2015-12-10 | 陈新存 |
| 64 | 测试周期 | 63 | start no earlier than 2015-12-10 | 林思敏 |
| 67 | 接口调试 | 66 | start no earlier than 2015-12-10 | 陈新存 |
| 69 | 测试周期 | 68 | start no earlier than 2015-12-10 | 陈新存 |
| 71 | UIUX |  | start no earlier than 2015-12-10 | 陈新存 |
| 72 | 测试周期 | 71 | start no earlier than 2015-12-10 | 陈新存 |
| 73 | **新浪微博SDK更新** | 70 | start no earlier than 2015-12-10 |  |
| 74 | UIUX |  | start no earlier than 2015-12-10 | 陈新存 |
| 75 | 测试周期 | 74 | start no earlier than 2015-12-10 | 陈新存 |
| 76 | **微博分享变更** | 44 | start no earlier than 2015-12-10 |  |
| 77 | 接口调试 |  | start no earlier than 2015-12-10 | 刘云鹏 |
| 78 | 测试周期 | 77 | start no earlier than 2015-12-10 | 刘云鹏 |

Changed:

| ID | Task | Predecessors | Other |
| --- | --- | --- | --- |
| 3 | **生活方式** |  | constraint start no earlier than 2015-12-10 → start no earlier than 2015-12-14; resources 黄玉辉 → none |
| 7 | **个人中心** | none → 3 | resources 黄玉辉 → none |
| 11 | **新闻收藏** |  | was named 新闻收藏（UIUX）; constraint none → start no earlier than 2015-12-14; resources 林思敏 → none |
| 14 | **集市** | none → 27 | was named 集市（UIUX）; resources 林思敏 → none |
| 17 | **系统设置** |  | was named 系统设置（UIUX）; resources 陈新存 → none |
| 20 | **直播新闻推送优化** | none → 17 | was named 新闻直播推送; resources 陈新存 → none |
| 24 | **并友** |  | was named 并友（UIUX）; resources 刘云鹏 → none |
| 27 | **通讯录** | none → 11 | was named 通讯录（UIUX）; resources 林思敏 → none |
| 31 | **生活方式** | none → 24 | was named 生活方式（UIUX）; resources 刘云鹏 → none |
| 35 | **即时新闻** | none → 31 | was named 即时新闻（UIUX）; resources 刘云鹏 → none |
| 39 | **视频播放** | none → 35 | resources 刘云鹏 → none |
| 44 | **百科词条** | none → 39 | resources 刘云鹏 → none |
| 50 | **精选文章列表** | none → 7 |  |
| 52 | 接口调试 | none → 51 |  |
| 53 | 业务逻辑 | none → 52 |  |
| 55 | **分类标签列表** | none → 20 |  |
| 57 | 业务逻辑 | none → 56 |  |
| 58 | 接口调试 | none → 57 |  |
| 60 | **标签文章列表** | none → 14 |  |
| 62 | 接口调试 | none → 61 |  |
| 63 | 业务逻辑 | none → 62 |  |
| 65 | **任务** | none → 55 |  |
| 68 | 业务逻辑 | none → 67 |  |
| 70 | **新的启动引导页** | none → 65 | was named 新启动引导页; resources 陈新存 → none |

## Version 3 (saved 2015-12-10)

Note of the change: （*）【开发计划】更新开发计划

Removed: 7 个人中心; 8 UIUX; 9 业务逻辑; 10 测试周期; 39 视频播放; 40 UIUX; 41 接口调试; 42 业务逻辑; 43 测试周期; 53 业务逻辑

Changed:

| ID | Task | Predecessors | Other |
| --- | --- | --- | --- |
| 3 | **生活方式与个人中心** |  | was named 生活方式 |
| 35 | **百科词条** | 视频播放 → 31 |  |
| 41 | **精选文章列表** | 个人中心 → 3 |  |
| 43 | 接口调试与业务逻辑 |  | was named 接口调试 |
| 44 | 测试周期 | 业务逻辑 → 43 |  |
| 66 | **新浪微博分享变更** |  | was named 微博分享变更 |

## Version 4 (saved 2015-12-14)

Note of the change: （*）【开发计划】更新开发计划

Added:

| ID | Task | Predecessors | Constraint | Resources |
| --- | --- | --- | --- | --- |
| 69 | 统一内部浏览器样式 | 41 | start no earlier than 2015-12-10 | 黄玉辉 |

## Version 5 (saved 2015-12-17)

Note of the change: （*）【开发计划】更新开发计划

Complete tasks 0 → 7.

Changed:

| ID | Task | Complete | Predecessors |
| --- | --- | --- | --- |
| 4 | UIUX | 0% → 100% |  |
| 5 | 业务逻辑 | 0% → 30% |  |
| 8 | UIUX | 0% → 100% |  |
| 11 | UIUX | 0% → 100% |  |
| 14 | UIUX | 0% → 100% |  |
| 18 | UIUX | 0% → 100% |  |
| 21 | UIUX | 0% → 100% |  |
| 24 | UIUX | 0% → 100% |  |
| 28 | UIUX | 0% → 80% |  |
| 46 | UIUX | 0% → 50% |  |
| 47 | 接口调试 |  | 48 → 46 |
| 48 | 业务逻辑 |  | 46 → 47 |
| 49 | 测试周期 |  | 47 → 48 |

## Version 6 (saved 2015-12-21)

Note of the change: （*）【开发计划】更新开发计划

Complete tasks 7 → 14.

Changed:

| ID | Task | Complete |
| --- | --- | --- |
| 5 | 业务逻辑 | 30% → 100% |
| 28 | UIUX | 80% → 100% |
| 29 | 业务逻辑 | 0% → 90% |
| 46 | UIUX | 50% → 100% |
| 48 | 业务逻辑 | 0% → 100% |
| 51 | UIUX | 0% → 30% |
| 56 | UIUX | 0% → 100% |
| 57 | 接口调试 | 0% → 100% |
| 58 | 业务逻辑 | 0% → 100% |

## Version 7 (saved 2015-12-21)

Note of the change: （*）【开发计划】更新开发计划

Complete tasks 14 → 17.

Changed:

| ID | Task | Complete |
| --- | --- | --- |
| 29 | 业务逻辑 | 90% → 100% |
| 32 | UIUX | 0% → 100% |
| 33 | 业务逻辑 | 0% → 100% |

## Version 8 (saved 2015-12-22)

Note of the change: （*）【开发计划】更新开发计划

Complete tasks 17 → 21.

Changed:

| ID | Task | Complete |
| --- | --- | --- |
| 6 | 测试周期 | 0% → 50% |
| 9 | 测试周期 | 0% → 100% |
| 22 | 测试周期 | 0% → 100% |
| 25 | 测试周期 | 0% → 100% |
| 36 | UIUX | 0% → 100% |

## Version 9 (saved 2015-12-25)

Note of the change: （*）【开发计划】更新开发计划

Complete tasks 21 → 25.

Changed:

| ID | Task | Complete | Other |
| --- | --- | --- | --- |
| 6 | 测试周期 | 50% → 90% |  |
| 42 | UIUX | 0% → 100% |  |
| 47 | 接口调试 | 0% → 100% |  |
| 51 | UIUX | 30% → 100% |  |
| 52 | 接口调试 | 0% → 100% |  |
| 53 | 业务逻辑 | 0% → 80% |  |
| 61 | UIUX、接口调试与业务逻辑 | 0% → 50% | was named UIUX |
| 69 | 统一内部浏览器样式 | 0% → 80% |  |

## Version 10 (saved 2015-12-25)

Note of the change: （*）【开发计划】更新开发计划

Changed:

| ID | Task | Other |
| --- | --- | --- |
| 69 | 统一内部浏览器样式 | resources 黄玉辉 → 黄玉辉; 刘云鹏 |

## Version 11 (saved 2015-12-26)

Note of the change: （*）【开发计划】更新开发计划

Complete tasks 25 → 26.

Added:

| ID | Task | Predecessors | Constraint | Resources |
| --- | --- | --- | --- | --- |
| 69 | **统一内部浏览器样式** |  | start no earlier than 2015-12-25 |  |
| 70 | 活动界面 | 44 | start no earlier than 2015-12-25 | 黄玉辉 |
| 71 | 原文界面 | 68 | start no earlier than 2015-12-25 | 刘云鹏 |
| 72 | 广告界面 | 65 | start no earlier than 2015-12-25 | 陈新存 |

Removed: 69 统一内部浏览器样式

## Version 12 (saved 2015-12-31)

Note of the change: （*）【开发计划】更新开发计划

Complete tasks 26 → 40.

Changed:

| ID | Task | Complete | Other |
| --- | --- | --- | --- |
| 6 | 测试周期 | 90% → 100% |  |
| 30 | 测试周期 | 0% → 100% |  |
| 34 | 测试周期 | 0% → 100% |  |
| 37 | 接口调试 | 0% → 100% |  |
| 38 | 业务逻辑 | 0% → 100% |  |
| 43 | 接口调试与业务逻辑 | 0% → 80% |  |
| 45 | **频道分类列表** |  | was named 分类标签列表 |
| 49 | 测试周期 | 0% → 100% |  |
| 50 | **分类文章列表** |  | was named 标签文章列表 |
| 53 | 业务逻辑 | 80% → 100% |  |
| 54 | 测试周期 | 0% → 100% |  |
| 62 | UIUX、接口调试与业务逻辑 | 50% → 100% |  |
| 64 | UIUX | 0% → 100% |  |
| 65 | 测试周期 | 0% → 100% |  |
| 67 | 接口调试 | 0% → 100% |  |
| 71 | 原文界面 | 0% → 100% |  |
| 72 | 广告界面 | 0% → 100% |  |
